# Lehong 2019

Schedule from MS Project, 2018-03-01 to 2019-10-01.

## Calendars

- Standard: Mon-Fri 09:00-17:00; Sat-Sun off.

## Resources

| Resource |
| --- |
| Sylvia More |
| Emilia Mohapi |
| Julie Smith |
| Kabelo Mohapi |
| Neo Mohapi |
| Andy Johns |
| Jackie Whiley |
| Blantina Morake |
| Project Support Officer |
| Randy Schepers |
| Amos Mokoena |
| Daniel Lee |
| Miles Mchunu |
| Justine Leakey |
| Derek Rivett |
| Manzi Nisela |
| Elias Makoti |
| Ollie Volta |
| Local Inspection Authority |
| Safety Analyst |
| Risk Analyst |

## Schedule

| ID | WBS | Task | Duration | Start | Finish | Predecessors | Total slack | Free slack | Constraint | Resources | Work |
| --- | --- | --- | --- | --- | --- | --- | --- | --- | --- | --- | --- |
| 1 | 1 | **Lehong 2019** | 414d | 2018-03-01 | 2019-10-01 |  | 0d |  | start no earlier than 2018-03-01 |  | 16456h |
| 2 | 1.1 | **Planning** | 51d | 2018-03-01 | 2018-05-10 |  | 0d |  |  |  | 1368h |
| 3 | 1.1.1 | Deciding on Project Concept | 7d | 2018-03-01 | 2018-03-09 |  | 0d |  | must start on 2018-03-01 | Sylvia More; Emilia Mohapi; Julie Smith; Kabelo Mohapi; Neo Mohapi; Andy Johns; Jackie Whiley | 392h |
| 4 | 1.1.2 | Concept Review | 2d | 2018-03-12 | 2018-03-13 | 3 | -3d | 0d | start no earlier than 2018-03-02 | Andy Johns | 16h |
| 5 | 1.1.3 | Determining Budget | 14d | 2018-03-02 | 2018-03-21 | 3 | -6d | 0d | must start on 2018-03-02 | Sylvia More; Jackie Whiley | 224h |
| 6 | 1.1.4 | **Engage Contractors** | 45d | 2018-03-09 | 2018-05-10 | 4 | 0d |  |  | Blantina Morake | 736h |
| 7 | 1.1.4.1 | Quantify space requirements | 7d | 2018-03-09 | 2018-03-19 | 4 | -3d | 0d | must start on 2018-03-09 | Andy Johns | 56h |
| 8 | 1.1.4.2 | Contractor Negotiations | 40d | 2018-03-16 | 2018-05-10 | 5 | -4d | 0d | must start on 2018-03-16 | Sylvia More | 320h |
| 9 | 1.2 | **Project Management** | 40d | 2018-05-04 | 2018-06-28 |  | -1d | 0d |  |  | 320h |
| 10 | 1.2.1 | Communication Strategy | 1d | 2018-05-04 | 2018-05-04 | 4 | -1d | 0d | start no earlier than 2018-05-04 | Project Support Officer | 8h |
| 11 | 1.2.2 | Support Services | 39d | 2018-05-07 | 2018-06-28 | 10 | 328d |  | start no earlier than 2018-05-04 | Project Support Officer | 312h |
| 12 | 1.3 | **Design** | 40d | 2018-05-04 | 2018-06-28 |  | 0d |  |  |  | 1600h |
| 13 | 1.3.1 | Industrial Design | 40d | 2018-05-04 | 2018-06-28 | 10 | -1d | 0d | must start on 2018-05-04 | Randy Schepers | 320h |
| 14 | 1.3.2 | **Mechanical Design** | 40d | 2018-05-04 | 2018-06-28 | 10 | 0d |  |  | Amos Mokoena; Daniel Lee | 1280h |
| 15 | 1.3.2.1 | Production line control software program | 40d | 2018-05-04 | 2018-06-28 | 10 | -1d | 0d | must start on 2018-05-04 | Andy Johns | 320h |
| 16 | 1.3.2.2 | Production train design | 40d | 2018-05-04 | 2018-06-28 | 10 | -1d | 0d | must start on 2018-05-04 | Miles Mchunu | 320h |
| 17 | 1.4 | **Preconstruction** | 37d | 2018-06-11 | 2018-07-31 |  | -3d | 0d |  |  | 424h |
| 18 | 1.4.1 | Waste Acceptance Criteria | 15d | 2018-06-29 | 2018-07-19 | 13 | -3d | 0d | start no earlier than 2018-06-08 | Project Support Officer | 120h |
| 19 | 1.4.2 | Quality Assurance | 10d | 2018-06-29 | 2018-07-12 | 13, 14, 15, 16 | 2d |  | start no earlier than 2018-06-29 | Andy Johns | 80h |
| 20 | 1.4.3 | Subcontractor Training | 20d | 2018-06-11 | 2018-07-06 | 8 | 6d |  | start no earlier than 2018-06-11 | Blantina Morake | 160h |
| 21 | 1.4.4 | Readiness Review | 8d | 2018-07-20 | 2018-07-31 | 18, 19, 20 | -3d | 0d | start no earlier than 2018-06-25 | Andy Johns | 64h |
| 22 | 1.5 | **Construction** | 315d | 2018-06-29 | 2019-09-12 |  | 0d |  |  |  | 10120h |
| 23 | 1.5.1 | Site-clearing | 20d | 2018-06-29 | 2018-07-26 | 7 | 0d |  | must start on 2018-06-29 | Daniel Lee | 160h |
| 24 | 1.5.2 | Building of Facility | 280d | 2018-07-27 | 2019-08-22 | 21, 23 | -3d | 0d | must start on 2018-07-27 | Daniel Lee; Justine Leakey; Derek Rivett; Manzi Nisela | 8960h |
| 25 | 1.5.3 | Install semi-automatic woodworking production train | 40d | 2018-11-02 | 2018-12-27 | 16, 24 | -210d | 0d | must start on 2018-11-02 | Amos Mokoena; Elias Makoti | 640h |
| 26 | 1.5.4 | Paint shop installation | 15d | 2019-08-23 | 2019-09-12 | 14, 24 | 0d |  | start no earlier than 2018-11-30 | Amos Mokoena | 120h |
| 27 | 1.5.5 | Hardware Installation | 10d | 2018-12-21 | 2019-01-03 | 24 | -175d | 0d | must start on 2018-12-21 | Ollie Volta | 80h |
| 28 | 1.5.6 | Software Installation | 5d | 2019-01-04 | 2019-01-10 | 15, 25 | 0d |  | must start on 2019-01-04 | Andy Johns | 40h |
| 29 | 1.5.7 | Install compressor | 5d | 2019-01-11 | 2019-01-17 | 24 | -160d | 0d | must start on 2019-01-11 | Ollie Volta | 40h |
| 30 | 1.5.8 | Install Air-conditioning | 10d | 2019-01-18 | 2019-01-31 | 24 | -155d | 0d | must start on 2019-01-18 | Ollie Volta | 80h |

| ID | WBS | Task | Duration | Start | Finish | Predecessors | Total slack | Constraint | Resources | Work |
| --- | --- | --- | --- | --- | --- | --- | --- | --- | --- | --- |
| 31 | 1.6 | **Final Inspection** | 167d | 2019-02-04 | 2019-09-24 |  | 0d |  |  | 136h |
| 32 | 1.6.1 | Complete production train inspection | 5d | 2019-02-04 | 2019-02-08 | 25 | 159d | start no earlier than 2019-02-04 | Andy Johns | 40h |
| 33 | 1.6.2 | Paint shop inspection | 5d | 2019-09-13 | 2019-09-19 | 26 | 0d | start no earlier than 2019-02-11 | Andy Johns | 40h |
| 34 | 1.6.3 | Building Inspection | 4d | 2019-08-23 | 2019-08-28 | 24 | 16d | start no earlier than 2019-02-16 | Andy Johns | 32h |
| 35 | 1.6.4 | Final approval | 3d | 2019-09-20 | 2019-09-24 | 32, 33, 34 | 0d | start no earlier than 2019-02-22 | Local Inspection Authority | 24h |
| 36 | 1.7 | **Safety and Environment** | 153d | 2018-07-27 | 2019-02-26 |  | 150d |  |  | 2448h |
| 37 | 1.7.1 | Safety Analysis Report | 153d | 2018-07-27 | 2019-02-26 |  | 150d | start no earlier than 2018-07-27 | Safety Analyst | 1224h |
| 38 | 1.7.2 | Probabilistic Risk Assessment | 153d | 2018-07-27 | 2019-02-26 |  | 150d | start no earlier than 2018-07-27 | Risk Analyst | 1224h |
| 39 | 1.8 | **Commissioning** | 5d | 2019-09-25 | 2019-10-01 |  | 0d |  |  | 40h |
| 40 | 1.8.1 | Production start-up | 5d | 2019-09-25 | 2019-10-01 | 35, 37, 38 | 0d | finish no earlier than 2019-03-01 | Andy Johns | 40h |
